# MIDRISE-42

How a schedule from Primavera P6 changed from version to version. A marks actual dates.

## Version 1 (data date 2026-04-01, saved 2026-11-07, file broken-circular-logic.xer)

Note of the change: build p6 xer schedule update review demo

| ID | WBS | Task | Duration | Start | Finish | Predecessors | Complete | Total float | Constraint |
| --- | --- | --- | --- | --- | --- | --- | --- | --- | --- |
|  | CLOSEOUT | **Closeout** |  | 2026-08-24 | 2026-11-03 |  |  |  |  |
| A2510 |  | Elevator inspection | 3d | 2026-08-24 | 2026-08-27 | A1540, A1700 |  | 53d | start on |
| A2500 |  | Fire alarm and life safety test | 5d | 2026-10-14 | 2026-10-19 | A1850, A1950, A2050, A2150, A1700 |  | 0d |  |
| A2520 |  | Final building inspections | 5d | 2026-10-19 | 2026-10-24 | A2500, A2510, A1430 |  | 0d |  |
| A2530 |  | Certificate of occupancy | 5d | 2026-10-24 | 2026-10-29 | A2520 |  | 5d |  |
| A2540 |  | Punch list | 10d | 2026-10-24 | 2026-11-03 | A2520 |  | 0d |  |
| A2550 |  | Turnover to owner | 0d | 2026-11-03 | 2026-11-03 | A2530, A2540 |  | 0d |  |
|  | ENVELOPE | **Envelope** |  | 2026-06-10 | 2026-08-28 |  |  |  |  |
| A1400 |  | Windows, levels 2-3 | 10d | 2026-06-10 | 2026-06-20 | A1320 |  | 0d |  |
| A1410 |  | Windows, levels 4-5 | 10d | 2026-07-04 | 2026-07-14 | A1340, A1400 |  | 23d |  |
| A1420 |  | Sheathing and weather barrier | 15d | 2026-07-14 | 2026-07-29 | A1410 |  | 23d |  |
| A1430 |  | Exterior cladding | 25d | 2026-07-29 | 2026-08-23 | A1420 |  | 57d |  |
| A1440 |  | Exterior building signage | 5d | 2026-08-23 | 2026-08-28 | A1430 |  | 67d |  |
|  | FOUNDATIONS | **Foundations** |  | 2026-04-03 | 2026-05-02 |  |  |  |  |
| A1200 |  | Footings | 8d | 2026-04-03 | 2026-04-11 | A1130, A1220 |  | 0d |  |
| A1210 |  | Foundation walls | 10d | 2026-04-11 | 2026-04-21 | A1200 |  | 0d |  |
| A1220 |  | Underslab plumbing and electrical | 6d | 2026-04-21 | 2026-04-27 | A1210 |  | 0d |  |
| A1230 |  | Slab on grade | 5d | 2026-04-27 | 2026-05-02 | A1220 |  | 0d |  |
|  | INTERIORS | **Interiors** |  | 2026-07-29 | 2026-10-14 |  |  |  |  |
| A1800 |  | Insulation and inspection, level 2 | 5d | 2026-07-29 | 2026-08-03 | A1640, A1420 |  | 23d |  |
| A1900 |  | Insulation and inspection, level 3 | 5d | 2026-07-29 | 2026-08-03 | A1650, A1420 |  | 23d |  |
| A1810 |  | Drywall hang and finish, level 2 | 15d | 2026-08-03 | 2026-08-18 | A1800 |  | 23d |  |
| A1910 |  | Drywall hang and finish, level 3 | 15d | 2026-08-03 | 2026-08-18 | A1900 |  | 23d |  |
| A2000 |  | Insulation and inspection, level 4 | 5d | 2026-08-06 | 2026-08-11 | A1660, A1420 |  | 15d |  |
| A2010 |  | Drywall hang and finish, level 4 | 15d | 2026-08-11 | 2026-08-26 | A2000 |  | 15d |  |
| A1820 |  | Paint, level 2 | 8d | 2026-08-18 | 2026-08-26 | A1810 |  | 23d |  |
| A1920 |  | Paint, level 3 | 8d | 2026-08-18 | 2026-08-26 | A1910 |  | 23d |  |
| A2100 |  | Insulation and inspection, level 5 | 5d | 2026-08-21 | 2026-08-26 | A1670, A1420 |  | 0d |  |
| A1830 |  | Cabinets and countertops, level 2 | 10d | 2026-08-26 | 2026-09-05 | A1820 |  | 23d |  |
| A1930 |  | Cabinets and countertops, level 3 | 10d | 2026-08-26 | 2026-09-05 | A1920 |  | 23d |  |
| A2020 |  | Paint, level 4 | 8d | 2026-08-26 | 2026-09-03 | A2010 |  | 15d |  |
| A2110 |  | Drywall hang and finish, level 5 | 15d | 2026-08-26 | 2026-09-10 | A2100 |  | 0d |  |
| A2030 |  | Cabinets and countertops, level 4 | 10d | 2026-09-03 | 2026-09-13 | A2020 |  | 15d |  |
| A1840 |  | Flooring, level 2 | 8d | 2026-09-05 | 2026-09-13 | A1830 |  | 23d |  |
| A1940 |  | Flooring, level 3 | 8d | 2026-09-05 | 2026-09-13 | A1930 |  | 23d |  |
| A2120 |  | Paint, level 5 | 8d | 2026-09-10 | 2026-09-18 | A2110 |  | 0d |  |
| A1850 |  | MEP trim and fixtures, level 2 | 8d | 2026-09-13 | 2026-09-21 | A1840 |  | 23d |  |
| A1950 |  | MEP trim and fixtures, level 3 | 8d | 2026-09-13 | 2026-09-21 | A1940 |  | 23d |  |
| A2040 |  | Flooring, level 4 | 8d | 2026-09-13 | 2026-09-21 | A2030 |  | 15d |  |
| A2130 |  | Cabinets and countertops, level 5 | 10d | 2026-09-18 | 2026-09-28 | A2120 |  | 0d |  |
| A2050 |  | MEP trim and fixtures, level 4 | 8d | 2026-09-21 | 2026-09-29 | A2040 |  | 15d |  |
| A2140 |  | Flooring, level 5 | 8d | 2026-09-28 | 2026-10-06 | A2130 |  | 0d |  |
| A2150 |  | MEP trim and fixtures, level 5 | 8d | 2026-10-06 | 2026-10-14 | A2140 |  | 0d |  |
|  | LONG-LEAD EQ | **Long-lead equipment** |  | 2026-03-02 | 2026-08-24 |  |  |  |  |
| A1500 |  | Switchgear submittal and approval | 15d | 2026-03-02 A | 2026-03-17 A | A1000 | 100% |  |  |
| A1520 |  | Elevator submittal and approval | 20d | 2026-03-02 A | 2026-03-22 A | A1000 | 100% |  |  |
| A1510 |  | Switchgear fabrication and delivery | 70d | 2026-03-17 A | 2026-05-26 | A1500 | 21% | 136d |  |
| A1530 |  | Elevator fabrication | 90d | 2026-03-22 A | 2026-06-20 | A1520 | 11% | 98d |  |
| A1540 |  | Elevator installation | 20d | 2026-07-22 | 2026-08-11 | A1530, A1360 |  | 66d |  |
| A1700 |  | Permanent power energized | 5d | 2026-08-19 | 2026-08-24 | A1510, A1630 |  | 51d |  |
|  | MEP ROUGH-IN | **MEP rough-in** |  | 2026-06-20 | 2026-08-21 |  |  |  |  |
| A1600 |  | MEP rough-in, level 2 | 15d | 2026-06-20 | 2026-07-05 | A1320, A1400 |  | 0d |  |
| A1610 |  | MEP rough-in, level 3 | 15d | 2026-07-05 | 2026-07-20 | A1330, A1600 |  | 0d |  |
| A1640 |  | Rough-in inspection, level 2 | 2d | 2026-07-05 | 2026-07-07 | A1600 |  | 45d |  |
| A1620 |  | MEP rough-in, level 4 | 15d | 2026-07-20 | 2026-08-04 | A1340, A1610 |  | 0d |  |
| A1650 |  | Rough-in inspection, level 3 | 2d | 2026-07-20 | 2026-07-22 | A1610 |  | 30d |  |
| A1630 |  | MEP rough-in, level 5 | 15d | 2026-08-04 | 2026-08-19 | A1350, A1620 |  | 0d |  |
| A1660 |  | Rough-in inspection, level 4 | 2d | 2026-08-04 | 2026-08-06 | A1620 |  | 15d |  |
| A1670 |  | Rough-in inspection, level 5 | 2d | 2026-08-19 | 2026-08-21 | A1630 |  | 0d |  |
|  | PRECONSTRUCT | **Preconstruction** |  | 2026-03-02 | 2026-03-10 |  |  |  |  |
| A1000 |  | Notice to proceed | 0d | 2026-03-02 A | 2026-03-02 A |  | 100% |  |  |
| A1010 |  | Building permit issued | 3d | 2026-03-02 A | 2026-03-05 A | A1000 | 100% |  |  |
| A1020 |  | Mobilize site | 5d | 2026-03-05 A | 2026-03-10 A | A1010 | 100% |  |  |
|  | SITEWORK | **Sitework** |  | 2026-03-10 | 2026-04-03 |  |  |  |  |
| A1100 |  | Clear and grub | 4d | 2026-03-10 A | 2026-03-14 A | A1020 | 100% |  |  |
| A1110 |  | Excavation and shoring | 12d | 2026-03-14 A | 2026-03-26 A | A1100 | 100% |  |  |
| A1120 |  | Underground utilities | 10d | 2026-03-19 A | 2026-03-29 A | A1110 SS+5d | 100% |  |  |
| A1130 |  | Building pad and compaction | 5d | 2026-03-29 A | 2026-04-03 | A1110, A1120 | 60% | 0d |  |
|  | STRUCTURE | **Structure** |  | 2026-05-02 | 2026-07-22 |  |  |  |  |
| A1300 |  | Podium deck, level 1 | 15d | 2026-05-02 | 2026-05-17 | A1230 |  | 0d |  |

| ID | Task | Duration | Start | Finish | Predecessors | Total float |
| --- | --- | --- | --- | --- | --- | --- |
| A1310 | Frame level 2 | 12d | 2026-05-17 | 2026-05-29 | A1300 | 0d |
| A1320 | Frame level 3 | 12d | 2026-05-29 | 2026-06-10 | A1310 | 0d |
| A1330 | Frame level 4 | 12d | 2026-06-10 | 2026-06-22 | A1320 | 13d |
| A1340 | Frame level 5 | 12d | 2026-06-22 | 2026-07-04 | A1330 | 16d |
| A1350 | Roof framing | 8d | 2026-07-04 | 2026-07-12 | A1340 | 23d |
| A1360 | Roofing | 10d | 2026-07-12 | 2026-07-22 | A1350 | 66d |

## Version 2 (data date 2026-05-01, saved 2026-11-07, file midrise-update-2-2026-05-01.xer)

Note of the change: build p6 xer schedule update review demo

Last finish 2026-11-03 → 2026-11-09 (+6d). Complete tasks 8 → 11.

Changed:

| ID | Task | Start | Finish | Complete | Total float | Predecessors |
| --- | --- | --- | --- | --- | --- | --- |
| CLOSEOUT | **Closeout** | 2026-08-24 → 2026-08-30 (+6d) | 2026-11-03 → 2026-11-09 (+6d) |  |  |  |
| A2510 | Elevator inspection | 2026-08-24 → 2026-08-30 (+6d) | 2026-08-27 → 2026-09-02 (+6d) |  |  |  |
| A2500 | Fire alarm and life safety test | 2026-10-14 → 2026-10-20 (+6d) | 2026-10-19 → 2026-10-25 (+6d) |  |  |  |
| A2520 | Final building inspections | 2026-10-19 → 2026-10-25 (+6d) | 2026-10-24 → 2026-10-30 (+6d) |  |  |  |
| A2530 | Certificate of occupancy | 2026-10-24 → 2026-10-30 (+6d) | 2026-10-29 → 2026-11-04 (+6d) |  |  |  |
| A2540 | Punch list | 2026-10-24 → 2026-10-30 (+6d) | 2026-11-03 → 2026-11-09 (+6d) |  |  |  |
| A2550 | Turnover to owner | 2026-11-03 → 2026-11-09 (+6d) | 2026-11-03 → 2026-11-09 (+6d) |  |  |  |
| ENVELOPE | **Envelope** | 2026-06-10 → 2026-06-16 (+6d) | 2026-08-28 → 2026-09-03 (+6d) |  |  |  |
| A1400 | Windows, levels 2-3 | 2026-06-10 → 2026-06-16 (+6d) | 2026-06-20 → 2026-06-26 (+6d) |  |  |  |
| A1410 | Windows, levels 4-5 | 2026-07-04 → 2026-07-10 (+6d) | 2026-07-14 → 2026-07-20 (+6d) |  |  |  |
| A1420 | Sheathing and weather barrier | 2026-07-14 → 2026-07-20 (+6d) | 2026-07-29 → 2026-08-04 (+6d) |  |  |  |
| A1430 | Exterior cladding | 2026-07-29 → 2026-08-04 (+6d) | 2026-08-23 → 2026-08-29 (+6d) |  |  |  |
| A1440 | Exterior building signage | 2026-08-23 → 2026-08-29 (+6d) | 2026-08-28 → 2026-09-03 (+6d) |  |  |  |
| FOUNDATIONS | **Foundations** | 2026-04-03 → 2026-04-06 (+3d) | 2026-05-02 → 2026-05-08 (+6d) |  |  |  |
| A1200 | Footings | 2026-04-03 → 2026-04-06 A (+3d) | 2026-04-11 → 2026-04-14 A (+3d) | 0% → 100% | 0d → none | A1130, A1220 → A1130 |
| A1210 | Foundation walls | 2026-04-11 → 2026-04-14 A (+3d) | 2026-04-21 → 2026-04-27 A (+6d) | 0% → 100% | 0d → none |  |
| A1220 | Underslab plumbing and electrical | 2026-04-21 → 2026-04-27 A (+6d) | 2026-04-27 → 2026-05-03 (+6d) | 0% → 67% |  |  |
| A1230 | Slab on grade | 2026-04-27 → 2026-05-03 (+6d) | 2026-05-02 → 2026-05-08 (+6d) |  |  |  |
| INTERIORS | **Interiors** | 2026-07-29 → 2026-08-04 (+6d) | 2026-10-14 → 2026-10-20 (+6d) |  |  |  |
| A1800 | Insulation and inspection, level 2 | 2026-07-29 → 2026-08-04 (+6d) | 2026-08-03 → 2026-08-09 (+6d) |  |  |  |
| A1900 | Insulation and inspection, level 3 | 2026-07-29 → 2026-08-04 (+6d) | 2026-08-03 → 2026-08-09 (+6d) |  |  |  |
| A1810 | Drywall hang and finish, level 2 | 2026-08-03 → 2026-08-09 (+6d) | 2026-08-18 → 2026-08-24 (+6d) |  |  |  |
| A1910 | Drywall hang and finish, level 3 | 2026-08-03 → 2026-08-09 (+6d) | 2026-08-18 → 2026-08-24 (+6d) |  |  |  |
| A2000 | Insulation and inspection, level 4 | 2026-08-06 → 2026-08-12 (+6d) | 2026-08-11 → 2026-08-17 (+6d) |  |  |  |
| A2010 | Drywall hang and finish, level 4 | 2026-08-11 → 2026-08-17 (+6d) | 2026-08-26 → 2026-09-01 (+6d) |  |  |  |
| A1820 | Paint, level 2 | 2026-08-18 → 2026-08-24 (+6d) | 2026-08-26 → 2026-09-01 (+6d) |  |  |  |
| A1920 | Paint, level 3 | 2026-08-18 → 2026-08-24 (+6d) | 2026-08-26 → 2026-09-01 (+6d) |  |  |  |
| A2100 | Insulation and inspection, level 5 | 2026-08-21 → 2026-08-27 (+6d) | 2026-08-26 → 2026-09-01 (+6d) |  |  |  |
| A1830 | Cabinets and countertops, level 2 | 2026-08-26 → 2026-09-01 (+6d) | 2026-09-05 → 2026-09-11 (+6d) |  |  |  |
| A1930 | Cabinets and countertops, level 3 | 2026-08-26 → 2026-09-01 (+6d) | 2026-09-05 → 2026-09-11 (+6d) |  |  |  |
| A2020 | Paint, level 4 | 2026-08-26 → 2026-09-01 (+6d) | 2026-09-03 → 2026-09-09 (+6d) |  |  |  |
| A2110 | Drywall hang and finish, level 5 | 2026-08-26 → 2026-09-01 (+6d) | 2026-09-10 → 2026-09-16 (+6d) |  |  |  |
| A2030 | Cabinets and countertops, level 4 | 2026-09-03 → 2026-09-09 (+6d) | 2026-09-13 → 2026-09-19 (+6d) |  |  |  |
| A1840 | Flooring, level 2 | 2026-09-05 → 2026-09-11 (+6d) | 2026-09-13 → 2026-09-19 (+6d) |  |  |  |
| A1940 | Flooring, level 3 | 2026-09-05 → 2026-09-11 (+6d) | 2026-09-13 → 2026-09-19 (+6d) |  |  |  |
| A2120 | Paint, level 5 | 2026-09-10 → 2026-09-16 (+6d) | 2026-09-18 → 2026-09-24 (+6d) |  |  |  |
| A1850 | MEP trim and fixtures, level 2 | 2026-09-13 → 2026-09-19 (+6d) | 2026-09-21 → 2026-09-27 (+6d) |  |  |  |
| A1950 | MEP trim and fixtures, level 3 | 2026-09-13 → 2026-09-19 (+6d) | 2026-09-21 → 2026-09-27 (+6d) |  |  |  |
| A2040 | Flooring, level 4 | 2026-09-13 → 2026-09-19 (+6d) | 2026-09-21 → 2026-09-27 (+6d) |  |  |  |
| A2130 | Cabinets and countertops, level 5 | 2026-09-18 → 2026-09-24 (+6d) | 2026-09-28 → 2026-10-04 (+6d) |  |  |  |
| A2050 | MEP trim and fixtures, level 4 | 2026-09-21 → 2026-09-27 (+6d) | 2026-09-29 → 2026-10-05 (+6d) |  |  |  |
| A2140 | Flooring, level 5 | 2026-09-28 → 2026-10-04 (+6d) | 2026-10-06 → 2026-10-12 (+6d) |  |  |  |
| A2150 | MEP trim and fixtures, level 5 | 2026-10-06 → 2026-10-12 (+6d) | 2026-10-14 → 2026-10-20 (+6d) |  |  |  |
| LONG-LEAD EQ | **Long-lead equipment** |  | 2026-08-24 → 2026-08-30 (+6d) |  |  |  |
| A1510 | Switchgear fabrication and delivery |  | 2026-05-26 → 2026-08-24 (+90d) | 21% → 0% | 136d → 52d |  |
| A1530 | Elevator fabrication |  |  | 11% → 44% | 98d → 104d |  |
| A1540 | Elevator installation | 2026-07-22 → 2026-07-28 (+6d) | 2026-08-11 → 2026-08-17 (+6d) |  |  |  |
| A1700 | Permanent power energized | 2026-08-19 → 2026-08-25 (+6d) | 2026-08-24 → 2026-08-30 (+6d) |  |  |  |
| MEP ROUGH-IN | **MEP rough-in** | 2026-06-20 → 2026-06-26 (+6d) | 2026-08-21 → 2026-08-27 (+6d) |  |  |  |
| A1600 | MEP rough-in, level 2 | 2026-06-20 → 2026-06-26 (+6d) | 2026-07-05 → 2026-07-11 (+6d) |  |  |  |
| A1610 | MEP rough-in, level 3 | 2026-07-05 → 2026-07-11 (+6d) | 2026-07-20 → 2026-07-26 (+6d) |  |  |  |
| A1640 | Rough-in inspection, level 2 | 2026-07-05 → 2026-07-11 (+6d) | 2026-07-07 → 2026-07-13 (+6d) |  |  |  |
| A1620 | MEP rough-in, level 4 | 2026-07-20 → 2026-07-26 (+6d) | 2026-08-04 → 2026-08-10 (+6d) |  |  |  |
| A1650 | Rough-in inspection, level 3 | 2026-07-20 → 2026-07-26 (+6d) | 2026-07-22 → 2026-07-28 (+6d) |  |  |  |
| A1630 | MEP rough-in, level 5 | 2026-08-04 → 2026-08-10 (+6d) | 2026-08-19 → 2026-08-25 (+6d) |  |  |  |
| A1660 | Rough-in inspection, level 4 | 2026-08-04 → 2026-08-10 (+6d) | 2026-08-06 → 2026-08-12 (+6d) |  |  |  |
| A1670 | Rough-in inspection, level 5 | 2026-08-19 → 2026-08-25 (+6d) | 2026-08-21 → 2026-08-27 (+6d) |  |  |  |
| SITEWORK | **Sitework** |  | 2026-04-03 → 2026-04-06 (+3d) |  |  |  |
| A1110 | Excavation and shoring |  | 2026-03-26 A → 2026-04-01 A (+6d) |  |  |  |
| A1130 | Building pad and compaction | 2026-03-29 A → 2026-04-01 A (+3d) | 2026-04-03 → 2026-04-06 A (+3d) | 60% → 100% | 0d → none |  |
| STRUCTURE | **Structure** | 2026-05-02 → 2026-05-08 (+6d) | 2026-07-22 → 2026-07-28 (+6d) |  |  |  |
| A1300 | Podium deck, level 1 | 2026-05-02 → 2026-05-08 (+6d) | 2026-05-17 → 2026-05-23 (+6d) |  |  |  |
| A1310 | Frame level 2 | 2026-05-17 → 2026-05-23 (+6d) | 2026-05-29 → 2026-06-04 (+6d) |  |  |  |
| A1320 | Frame level 3 | 2026-05-29 → 2026-06-04 (+6d) | 2026-06-10 → 2026-06-16 (+6d) |  |  |  |
| A1330 | Frame level 4 | 2026-06-10 → 2026-06-16 (+6d) | 2026-06-22 → 2026-06-28 (+6d) |  |  |  |
| A1340 | Frame level 5 | 2026-06-22 → 2026-06-28 (+6d) | 2026-07-04 → 2026-07-10 (+6d) |  |  |  |
| A1350 | Roof framing | 2026-07-04 → 2026-07-10 (+6d) | 2026-07-12 → 2026-07-18 (+6d) |  |  |  |
| A1360 | Roofing | 2026-07-12 → 2026-07-18 (+6d) | 2026-07-22 → 2026-07-28 (+6d) |  |  |  |

## Version 3 (data date 2026-05-31, saved 2026-11-07, file midrise-update-3-2026-05-31.xer)

Note of the change: build p6 xer schedule update review demo

Last finish 2026-11-09 → 2026-11-11 (+2d). Complete tasks 11 → 14.

Changed:

| ID | Task | Start | Finish | Complete | Total float |
| --- | --- | --- | --- | --- | --- |
| CLOSEOUT | **Closeout** | 2026-08-30 → 2026-10-16 (+47d) | 2026-11-09 → 2026-11-11 (+2d) |  |  |
| A2510 | Elevator inspection | 2026-08-30 → 2026-10-16 (+47d) | 2026-09-02 → 2026-10-19 (+47d) |  | 53d → 8d |
| A2500 | Fire alarm and life safety test | 2026-10-20 → 2026-10-22 (+2d) | 2026-10-25 → 2026-10-27 (+2d) |  |  |
| A2520 | Final building inspections | 2026-10-25 → 2026-10-27 (+2d) | 2026-10-30 → 2026-11-01 (+2d) |  |  |
| A2530 | Certificate of occupancy | 2026-10-30 → 2026-11-01 (+2d) | 2026-11-04 → 2026-11-06 (+2d) |  |  |
| A2540 | Punch list | 2026-10-30 → 2026-11-01 (+2d) | 2026-11-09 → 2026-11-11 (+2d) |  |  |
| A2550 | Turnover to owner | 2026-11-09 → 2026-11-11 (+2d) | 2026-11-09 → 2026-11-11 (+2d) |  |  |
| ENVELOPE | **Envelope** | 2026-06-16 → 2026-06-21 (+5d) | 2026-09-03 → 2026-09-08 (+5d) |  |  |
| A1400 | Windows, levels 2-3 | 2026-06-16 → 2026-06-21 (+5d) | 2026-06-26 → 2026-07-01 (+5d) |  |  |
| A1410 | Windows, levels 4-5 | 2026-07-10 → 2026-07-15 (+5d) | 2026-07-20 → 2026-07-25 (+5d) |  | 23d → 20d |
| A1420 | Sheathing and weather barrier | 2026-07-20 → 2026-07-25 (+5d) | 2026-08-04 → 2026-08-09 (+5d) |  | 23d → 20d |
| A1430 | Exterior cladding | 2026-08-04 → 2026-08-09 (+5d) | 2026-08-29 → 2026-09-03 (+5d) |  | 57d → 54d |
| A1440 | Exterior building signage | 2026-08-29 → 2026-09-03 (+5d) | 2026-09-03 → 2026-09-08 (+5d) |  | 67d → 64d |
| A1220 | Underslab plumbing and electrical |  | 2026-05-03 A | 67% → 100% | 0d → none |
| A1230 | Slab on grade | 2026-05-03 A | 2026-05-08 A | 0% → 100% | 0d → none |
| INTERIORS | **Interiors** | 2026-08-04 → 2026-08-09 (+5d) | 2026-10-20 → 2026-10-22 (+2d) |  |  |
| A1800 | Insulation and inspection, level 2 | 2026-08-04 → 2026-08-09 (+5d) | 2026-08-09 → 2026-08-14 (+5d) |  | 23d → 20d |
| A1900 | Insulation and inspection, level 3 | 2026-08-04 → 2026-08-09 (+5d) | 2026-08-09 → 2026-08-14 (+5d) |  | 23d → 20d |
| A1810 | Drywall hang and finish, level 2 | 2026-08-09 → 2026-08-14 (+5d) | 2026-08-24 → 2026-08-29 (+5d) |  | 23d → 20d |
| A1910 | Drywall hang and finish, level 3 | 2026-08-09 → 2026-08-14 (+5d) | 2026-08-24 → 2026-08-29 (+5d) |  | 23d → 20d |
| A2000 | Insulation and inspection, level 4 | 2026-08-12 → 2026-08-17 (+5d) | 2026-08-17 → 2026-08-22 (+5d) |  | 15d → 12d |
| A2010 | Drywall hang and finish, level 4 | 2026-08-17 → 2026-08-22 (+5d) | 2026-09-01 → 2026-09-06 (+5d) |  | 15d → 12d |
| A1820 | Paint, level 2 | 2026-08-24 → 2026-08-29 (+5d) | 2026-09-01 → 2026-09-06 (+5d) |  | 23d → 20d |
| A1920 | Paint, level 3 | 2026-08-24 → 2026-08-29 (+5d) | 2026-09-01 → 2026-09-06 (+5d) |  | 23d → 20d |
| A2100 | Insulation and inspection, level 5 | 2026-08-27 → 2026-09-01 (+5d) | 2026-09-01 → 2026-09-06 (+5d) |  |  |
| A1830 | Cabinets and countertops, level 2 | 2026-09-01 → 2026-09-06 (+5d) | 2026-09-11 → 2026-09-16 (+5d) |  | 23d → 20d |
| A1930 | Cabinets and countertops, level 3 | 2026-09-01 → 2026-09-06 (+5d) | 2026-09-11 → 2026-09-16 (+5d) |  | 23d → 20d |
| A2020 | Paint, level 4 | 2026-09-01 → 2026-09-06 (+5d) | 2026-09-09 → 2026-09-14 (+5d) |  | 15d → 12d |
| A2110 | Drywall hang and finish, level 5 | 2026-09-01 → 2026-09-06 (+5d) | 2026-09-16 → 2026-09-18 (+2d) |  |  |
| A2030 | Cabinets and countertops, level 4 | 2026-09-09 → 2026-09-14 (+5d) | 2026-09-19 → 2026-09-24 (+5d) |  | 15d → 12d |
| A1840 | Flooring, level 2 | 2026-09-11 → 2026-09-16 (+5d) | 2026-09-19 → 2026-09-24 (+5d) |  | 23d → 20d |
| A1940 | Flooring, level 3 | 2026-09-11 → 2026-09-16 (+5d) | 2026-09-19 → 2026-09-24 (+5d) |  | 23d → 20d |
| A2120 | Paint, level 5 | 2026-09-16 → 2026-09-18 (+2d) | 2026-09-24 → 2026-09-26 (+2d) |  |  |
| A1850 | MEP trim and fixtures, level 2 | 2026-09-19 → 2026-09-24 (+5d) | 2026-09-27 → 2026-10-02 (+5d) |  | 23d → 20d |
| A1950 | MEP trim and fixtures, level 3 | 2026-09-19 → 2026-09-24 (+5d) | 2026-09-27 → 2026-10-02 (+5d) |  | 23d → 20d |
| A2040 | Flooring, level 4 | 2026-09-19 → 2026-09-24 (+5d) | 2026-09-27 → 2026-10-02 (+5d) |  | 15d → 12d |
| A2130 | Cabinets and countertops, level 5 | 2026-09-24 → 2026-09-26 (+2d) | 2026-10-04 → 2026-10-06 (+2d) |  |  |
| A2050 | MEP trim and fixtures, level 4 | 2026-09-27 → 2026-10-02 (+5d) | 2026-10-05 → 2026-10-10 (+5d) |  | 15d → 12d |
| A2140 | Flooring, level 5 | 2026-10-04 → 2026-10-06 (+2d) | 2026-10-12 → 2026-10-14 (+2d) |  |  |
| A2150 | MEP trim and fixtures, level 5 | 2026-10-12 → 2026-10-14 (+2d) | 2026-10-20 → 2026-10-22 (+2d) |  |  |
| LONG-LEAD EQ | **Long-lead equipment** |  | 2026-08-30 → 2026-10-16 (+47d) |  |  |
| A1510 | Switchgear fabrication and delivery |  | 2026-08-24 → 2026-10-11 (+48d) |  | 52d → 6d |
| A1530 | Elevator fabrication |  |  | 44% → 78% | 104d → 106d |
| A1540 | Elevator installation | 2026-07-28 → 2026-08-02 (+5d) | 2026-08-17 → 2026-08-22 (+5d) |  | 66d → 63d |
| A1700 | Permanent power energized | 2026-08-25 → 2026-10-11 (+47d) | 2026-08-30 → 2026-10-16 (+47d) |  | 51d → 6d |
| MEP ROUGH-IN | **MEP rough-in** | 2026-06-26 → 2026-07-01 (+5d) | 2026-08-27 → 2026-09-01 (+5d) |  |  |
| A1600 | MEP rough-in, level 2 | 2026-06-26 → 2026-07-01 (+5d) | 2026-07-11 → 2026-07-16 (+5d) |  |  |
| A1610 | MEP rough-in, level 3 | 2026-07-11 → 2026-07-16 (+5d) | 2026-07-26 → 2026-07-31 (+5d) |  |  |
| A1640 | Rough-in inspection, level 2 | 2026-07-11 → 2026-07-16 (+5d) | 2026-07-13 → 2026-07-18 (+5d) |  | 45d → 42d |
| A1620 | MEP rough-in, level 4 | 2026-07-26 → 2026-07-31 (+5d) | 2026-08-10 → 2026-08-15 (+5d) |  |  |
| A1650 | Rough-in inspection, level 3 | 2026-07-26 → 2026-07-31 (+5d) | 2026-07-28 → 2026-08-02 (+5d) |  | 30d → 27d |
| A1630 | MEP rough-in, level 5 | 2026-08-10 → 2026-08-15 (+5d) | 2026-08-25 → 2026-08-30 (+5d) |  |  |
| A1660 | Rough-in inspection, level 4 | 2026-08-10 → 2026-08-15 (+5d) | 2026-08-12 → 2026-08-17 (+5d) |  | 15d → 12d |
| A1670 | Rough-in inspection, level 5 | 2026-08-25 → 2026-08-30 (+5d) | 2026-08-27 → 2026-09-01 (+5d) |  |  |
| STRUCTURE | **Structure** |  | 2026-07-28 → 2026-08-02 (+5d) |  |  |
| A1300 | Podium deck, level 1 | 2026-05-08 A | 2026-05-23 → 2026-05-28 A (+5d) | 0% → 100% | 0d → none |
| A1310 | Frame level 2 | 2026-05-23 → 2026-05-28 A (+5d) | 2026-06-04 → 2026-06-09 (+5d) | 0% → 25% |  |
| A1320 | Frame level 3 | 2026-06-04 → 2026-06-09 (+5d) | 2026-06-16 → 2026-06-21 (+5d) |  |  |
| A1330 | Frame level 4 | 2026-06-16 → 2026-06-21 (+5d) | 2026-06-28 → 2026-07-03 (+5d) |  |  |
| A1340 | Frame level 5 | 2026-06-28 → 2026-07-03 (+5d) | 2026-07-10 → 2026-07-15 (+5d) |  |  |
| A1350 | Roof framing | 2026-07-10 → 2026-07-15 (+5d) | 2026-07-18 → 2026-07-23 (+5d) |  |  |
| A1360 | Roofing | 2026-07-18 → 2026-07-23 (+5d) | 2026-07-28 → 2026-08-02 (+5d) |  | 66d → 63d |
